# Sistema de monitoreo de un equipo de extraccion de petroleo

Schedule from Planner, 2022-06-21 to 2023-06-02.

## Calendars

- Predeterminado: Mon-Fri 14:00-16:30; Sat-Sun off.

## Resources

| Resource |
| --- |
| Ejecutor |
| colaborador |

## Schedule

| ID | WBS | Task | Type | Duration | Start | Finish | Predecessors | Resources | Work |
| --- | --- | --- | --- | --- | --- | --- | --- | --- | --- |
| 1 | 1 | **Planificación de proyecto** |  |  | 2022-06-21 | 2022-08-08 |  |  | 86h |
| 2 | 1.1 | Definición de arquitectura de la solución |  |  | 2022-06-21 | 2022-06-24 |  | Ejecutor | 8h |
| 3 | 1.2 | Investigación de componentes principales del sistema |  |  | 2022-06-24 | 2022-07-18 | 2 | Ejecutor | 40h |
| 4 | 1.3 | Estimación de recursos necesarios y costos asociados |  |  | 2022-07-18 | 2022-07-21 | 3 | Ejecutor | 8h |
| 5 | 1.4 | Definiciones de alcances, requerimientos y presupuestos |  |  | 2022-07-21 | 2022-08-08 | 4 | Ejecutor | 30h |
| 6 | 2 | **Desarrollo del dispositivo de medición** |  |  | 2022-08-08 | 2022-10-06 |  |  | 130h |
| 7 | 2.1 | Análisis y definición de funcionalidades |  |  | 2022-08-08 | 2022-08-09 | 5 | Ejecutor | 4h |
| 8 | 2.2 | Selección de componentes |  |  | 2022-08-10 | 2022-08-19 | 7 | Ejecutor | 18h |
| 9 | 2.3 | Análisis y definición de procedimiento de montaje en AIB |  |  | 2022-08-19 | 2022-08-25 | 8 | Ejecutor; colaborador | 20h |
| 10 | 2.4 | Estudio, pruebas y definición de configuración del nodo LoRaWAN |  |  | 2022-08-29 | 2022-09-01 | 8FS+192h | Ejecutor; colaborador | 16h |
| 11 | 2.5 | Análisis, pruebas y definición de transductores. |  |  | 2022-09-02 | 2022-09-12 | 8FS+336h | Ejecutor; colaborador | 32h |
| 12 | 2.6 | Integración y pruebas del conjunto nodo - transductores en AIB operativo |  |  | 2022-09-12 | 2022-09-22 | 11, 10, 9 | Ejecutor; colaborador | 40h |
| 13 | 2.7 | Dispositivo listo | milestone | 0d | 2022-10-06 | 2022-10-06 | 30 |  |  |
| 14 | 3 | **Estructura de mensajes** |  |  | 2022-10-06 | 2022-10-28 |  |  | 42h |
| 15 | 3.1 | Definición de jerarquía de tópicos |  |  | 2022-10-06 | 2022-10-17 | 30, 7 | Ejecutor | 18h |
| 16 | 3.2 | Decodificación y escalado de carga útil |  |  | 2022-10-17 | 2022-10-28 | 15, 7 | Ejecutor | 24h |
| 17 | 3.3 | Estructua de msg. lista | milestone | 0d | 2022-10-28 | 2022-10-28 | 16 |  |  |
| 18 | 4 | **Desarrollo de componentes en la nube** |  |  | 2022-10-31 | 2023-01-16 |  |  | 178h |
| 19 | 4.1 | Despliegue y configuración de componente IoT Hub |  |  | 2022-10-31 | 2022-11-04 | 16, 7 | Ejecutor | 12h |
| 20 | 4.2 | Despliegue y configuración de base de datos |  |  | 2022-11-04 | 2022-11-18 | 19 | Ejecutor | 24h |
| 21 | 4.3 | Despliegue y configuración de funciones y flujo de notificaciones |  |  | 2022-11-18 | 2022-12-07 | 20 | Ejecutor | 32h |
| 22 | 4.4 | Despliegue y configuración de componentes para aplicación de servidor |  |  | 2022-12-07 | 2022-12-19 | 21 | Ejecutor; colaborador | 40h |
| 23 | 4.5 | Desarrollo de la interfaz de la aplicación de usuario |  |  | 2022-12-19 | 2022-12-29 | 22 | Ejecutor; colaborador | 40h |
| 24 | 4.6 | Desarrollo de la interfaz para notificaciones por Telegram |  |  | 2022-12-29 | 2023-01-16 | 23 | Ejecutor | 30h |

Notes:
- 13: Dispositivo listo

| ID | WBS | Task | Type | Duration | Start | Finish | Predecessors | Resources | Work |
| --- | --- | --- | --- | --- | --- | --- | --- | --- | --- |
| 25 | 5 | **Pruebas de Integración del sistema** |  |  | 2023-02-10 | 2023-02-20 |  |  | 30h |
| 26 | 5.1 | Diseño y despliegue de pruebas de funcionalidad integral. |  |  | 2023-02-10 | 2023-02-20 | 30, 31, 16, 15 | Ejecutor; colaborador | 30h |
| 27 | 5.2 | Integracion lista | milestone | 0d | 2023-02-20 | 2023-02-20 | 26 |  |  |
| 28 | 6 | **Documentación** |  |  | 2022-09-22 | 2023-06-02 |  |  | 258.5h |
| 29 | 6.1 | Elaboración de informe de avance del proyecto |  |  | 2023-02-20 | 2023-03-08 | 26 | Ejecutor | 30h |
| 30 | 6.2 | Elaboración de manual de configuración e instalación del dispositivo de medición |  |  | 2022-09-22 | 2022-10-06 | 12 | Ejecutor | 24h |
| 31 | 6.3 | Elaboración de documentación de configuración de componentes en Microsoft Azure |  |  | 2023-01-27 | 2023-02-10 | 33, 24 | Ejecutor | 24h |
| 32 | 6.4 | Nube implementada | milestone | 0d | 2023-02-10 | 2023-02-10 | 31 |  |  |
| 33 | 6.5 | Elaboración de manual de uso del software de usuario |  |  | 2023-01-16 | 2023-01-27 | 24, 23 | Ejecutor | 24h |
| 34 | 6.6 | Elaboración de informe final del proyecto |  |  | 2023-03-08 | 2023-05-31 | 29 | Ejecutor | 150h |
| 35 | 6.7 | Cierre del proyecto |  |  | 2023-05-31 | 2023-06-02 | 34 | Ejecutor | 6.5h |
